# PLN_ODS_2010_2

Schedule from MS Project, 2016-04-01 to 2016-11-18, status date 2011-06-02, A marks actual dates.
Telecom Personal S.A.

## Calendars

- Estándar: Mon-Wed 09:00-13:00, 14:00-18:00; Thu 09:00-13:00, 14:00-16:00; Fri 09:00-13:00, 14:00-18:00; Sat-Sun off. Exceptions (off unless hours are given): 2016-05-25 (Día de La Revolución de Mayo), 2016-06-20 (Día Paso a la Inmortalidad del Gral Belgrano), 2016-07-08 (Puente Turistico), 2016-08-15 (Día Paso a la Inmortalidad del Gral San Martin), 2016-10-10 (Día Del Respeto a la Diversidad Cultural).

## Resources

| Resource |
| --- |
| PM |
| CATEDRA |
| LD |
| AFSR1 |
| AFSR2 |
| AFSSR2 |
| ARQ |
| AFSSR1 |
| DSR1 |
| DSR2 |
| DSSR1 |
| DSSR2 |
| DJR1 |
| AQ1 |
| AQ2 |

## Schedule

| ID | WBS | Task | Type | Duration | Start | Finish | Predecessors | Complete | Remaining | Baseline start | Baseline finish | Baseline duration | Total slack | Free slack | Constraint | Resources | Work | Actual work |
| --- | --- | --- | --- | --- | --- | --- | --- | --- | --- | --- | --- | --- | --- | --- | --- | --- | --- | --- |
| 1 | 1 | **Sistema adaptativo de formación educativa** |  | 151.25d | 2016-04-01 A | 2016-11-18 |  | 20% | 120.85d | 2016-04-01 | 2016-11-18 | 4441h | 0d |  |  |  | 4441h | 837h |
| 2 | 1.1 | **Etapa 1: Inicio** |  | 59.25d | 2016-04-01 A | 2016-07-01 |  | 39% | 36.1d | 2016-04-01 | 2016-07-01 | 1221h | 92d |  |  |  | 1221h | 477h |
| 3 | 1.1.1 | Incio del Proyecto + Presentación |  | 83h | 2016-04-01 A | 2016-04-18 A |  | 100% |  | 2016-04-01 | 2016-04-18 | 83h |  |  | finish no earlier than 2016-04-01 | PM | 83h | 83h |
| 4 | 1.1.2 | 1.1. Elaborar Acta de Proyecto |  | 26d | 2016-05-20 A | 2016-07-01 |  |  | 26d | 2016-05-20 | 2016-07-01 | 208h | 92d | 0d |  | PM | 208h |  |
| 5 | 1.1.3 | 1.2. Elaborar Documento de WBS |  | 10.38d | 2016-05-20 A | 2016-06-07 A |  | 100% |  | 2016-05-20 | 2016-06-07 | 83h |  |  | finish no earlier than 2016-05-20 | LD | 83h | 83h |
| 6 | 1.1.4 | 1.3. Elaborar Gantt de Proyect |  | 21d | 2016-05-27 A | 2016-06-29 |  | 45% | 11.62d | 2016-05-27 | 2016-06-29 | 168h | 93.25d | 0d |  | PM | 168h | 75h |
| 7 | 1.1.5 | 1.4. Elaborar Matriz de Habilidades y Competencias |  | 6.38d | 2016-05-20 A | 2016-06-07 A |  | 100% |  | 2016-05-20 | 2016-06-07 | 51h |  |  | finish no earlier than 2016-05-20 | LD | 51h | 51h |
| 8 | 1.1.6 | 1.5. Elaborar Matriz de Roles y Responsabilidade |  | 6.38d | 2016-05-20 A | 2016-06-07 A |  | 100% |  | 2016-05-20 | 2016-06-07 | 51h |  |  | finish no earlier than 2016-05-20 | LD | 51h | 51h |
| 9 | 1.1.7 | 1.6. Elaborar Matriz de Comunicaciones |  | 6.38d | 2016-05-20 A | 2016-06-07 A |  | 100% |  | 2016-05-20 | 2016-06-07 | 51h |  |  | finish no earlier than 2016-05-20 | LD | 51h | 51h |
| 10 | 1.1.8 | 1.7. Elaborar Matriz de Costos de Proyecto |  | 18d | 2016-05-20 A | 2016-06-17 |  |  | 18d | 2016-05-20 | 2016-06-17 | 144h | 100d |  | start no earlier than 2016-05-06 | PM | 144h |  |
| 11 | 1.1.9 | 1.8. Elaborar Documentos Gestión de Riesgos |  | 21.75d | 2016-05-20 A | 2016-06-24 |  | 48% | 11.38d | 2016-05-20 | 2016-06-24 | 174h | 96.25d | 0d |  | LD | 174h | 83h |
| 12 | 1.1.10 | 1.9. Aprobar Documentación |  | 26d | 2016-05-20 A | 2016-07-01 |  |  | 26d | 2016-05-20 | 2016-07-01 | 208h | 92d |  |  | CATEDRA | 208h |  |
| 13 | 1.2 | [1] Acta de Proyecto | milestone | 0d | 2016-07-01 | 2016-07-01 | 4 |  |  | 2016-07-01 | 2016-07-01 | 0h | 92d |  |  |  |  |  |
| 14 | 1.3 | [2] Documento de WBS | milestone | 0d | 2016-05-20 A | 2016-05-20 A | 5 | 100% |  | 2016-05-20 | 2016-05-20 | 0h |  |  | finish no earlier than 2016-05-20 |  |  |  |
| 15 | 1.4 | [3] Gantt de Proyect | milestone | 0d | 2016-06-29 | 2016-06-29 | 6 |  |  | 2016-06-29 | 2016-06-29 | 0h | 93.25d |  |  |  |  |  |
| 16 | 1.5 | [4] Matriz de Habilidades y Competencias | milestone | 0d | 2016-05-20 A | 2016-05-20 A | 7 | 100% |  | 2016-05-20 | 2016-05-20 | 0h |  |  | start no earlier than 2016-05-20 |  |  |  |
| 17 | 1.6 | [5] Matriz de Roles y Responsabilidade | milestone | 0d | 2016-05-20 A | 2016-05-20 A | 8 | 100% |  | 2016-05-20 | 2016-05-20 | 0h |  |  | start no earlier than 2016-05-20 |  |  |  |
| 18 | 1.7 | [6] Matriz de Comunicaciones | milestone | 0d | 2016-05-20 A | 2016-05-20 A | 9 | 100% |  | 2016-05-20 | 2016-05-20 | 0h |  |  | start no earlier than 2016-05-20 |  |  |  |
| 19 | 1.8 | [7] Matriz de Costos de Proyecto | milestone | 0d | 2016-05-20 A | 2016-05-20 A | 10 | 100% |  | 2016-05-20 | 2016-05-20 | 0h |  |  | start no earlier than 2016-05-20 |  |  |  |
| 20 | 1.9 | [8] Documentos Tabla de Riesgos | milestone | 0d | 2016-06-24 | 2016-06-24 | 11 |  |  | 2016-06-24 | 2016-06-24 | 0h | 96.25d |  | finish no earlier than 2016-06-24 |  |  |  |
| 21 | 1.10 | **Etapa 2: Relevamiento y Definición** |  | 62.12d | 2016-05-20 A | 2016-08-26 |  | 20% | 49.6d | 2016-05-20 | 2016-08-26 | 1120h | 0d |  |  |  | 1120h | 360h |
| 22 | 1.10.1 | 2.1. Elaborar Documentación e Información de Cursos |  | 21d | 2016-05-20 A | 2016-06-24 A | 14 | 100% |  | 2016-05-20 | 2016-06-24 | 336h |  |  |  | AFSR2; AFSSR2 | 336h | 336h |
| 23 | 1.10.2 | 2.2. Elaborar Casos de Uso del Negocio |  | 26d | 2016-05-20 A | 2016-07-01 | 14 |  | 26d | 2016-05-20 | 2016-07-01 | 208h | 0d |  |  | AFSR1 | 208h |  |
| 24 | 1.10.3 | 2.3. Elaborar Documento de Arquitectura |  | 26d | 2016-05-20 A | 2016-07-01 | 14 |  | 26d | 2016-05-20 | 2016-07-01 | 208h | 0d |  |  | ARQ | 208h |  |
| 25 | 1.10.4 | 2.4. Elaborar Documento de Diseño de Interfaces |  | 26d | 2016-05-20 A | 2016-07-01 | 14 |  | 26d | 2016-05-20 | 2016-07-01 | 208h | 0d |  |  | LD | 208h |  |
| 26 | 1.10.5 | 2.5. Elaborar Presentación Comercial |  | 8d | 2016-08-16 | 2016-08-26 |  |  |  | 2016-08-16 | 2016-08-26 | 64h | 0d |  | start no earlier than 2016-08-15 | PM | 64h |  |
| 27 | 1.10.6 | 2.6. Elaborar Poster |  | 9d | 2016-07-25 | 2016-08-05 |  |  |  | 2016-07-25 | 2016-08-05 | 72h | 0d |  | start no earlier than 2016-07-25 | LD | 72h |  |
| 28 | 1.10.7 | 2.7. Elaborar Tablero de Control |  | 3d | 2016-05-27 A | 2016-06-01 A |  | 100% |  | 2016-05-27 | 2016-06-01 | 24h |  |  |  | PM | 24h | 24h |
| 29 | 1.11 | [1] Documentación e Información de Curso | milestone | 0d | 2016-06-24 | 2016-06-24 | 22 |  |  | 2016-06-24 | 2016-06-24 | 0h | 0d |  | finish no earlier than 2016-06-17 |  |  |  |
| 30 | 1.12 | [2] Documentaicón de Casos de Uso del Negocio | milestone | 0d | 2016-07-01 | 2016-07-01 | 23 |  |  | 2016-07-01 | 2016-07-01 | 0h | 0d |  |  |  |  |  |
| 31 | 1.13 | [3] Documentación de Arquitectura | milestone | 0d | 2016-07-01 | 2016-07-01 | 24 |  |  | 2016-07-01 | 2016-07-01 | 0h | 0d |  |  |  |  |  |
| 32 | 1.14 | [5] Documentación de Diseño de Interfaces | milestone | 0d | 2016-07-01 | 2016-07-01 | 25 |  |  | 2016-07-01 | 2016-07-01 | 0h | 0d |  |  |  |  |  |
| 33 | 1.15 | [6] Documentación Presentación Comercial | milestone | 0d | 2016-08-26 | 2016-08-26 | 26 |  |  | 2016-08-26 | 2016-08-26 | 0h | 0d |  |  |  |  |  |
| 34 | 1.16 | [7] Documentación Poster | milestone | 0d | 2016-08-05 | 2016-08-05 | 27 |  |  | 2016-08-05 | 2016-08-05 | 0h | 0d |  |  |  |  |  |
| 35 | 1.17 | [8] Documentación Tablero de Control Primera Presentación | milestone | 0d | 2016-05-27 A | 2016-05-27 A | 28 | 100% |  | 2016-05-27 | 2016-05-27 | 0h |  |  |  |  |  |  |

| ID | WBS | Task | Type | Duration | Start | Finish | Predecessors | Baseline start | Baseline finish | Baseline duration | Total slack | Free slack | Constraint | Resources | Work |
| --- | --- | --- | --- | --- | --- | --- | --- | --- | --- | --- | --- | --- | --- | --- | --- |
| 36 | 1.18 | **Etapa 3: Análisis, Desarrollo y Testing** |  | 85d | 2016-07-01 | 2016-11-08 |  | 2016-07-01 | 2016-11-08 | 1928h | 2d |  |  |  | 1928h |
| 37 | 1.18.1 | **Incremento 3.1** |  | 38d | 2016-07-01 | 2016-08-30 |  | 2016-07-01 | 2016-08-30 | 776h | 2d |  |  |  | 776h |
| 38 | 1.18.1.1 | 3.1.1. Casos de uso de interfaces de usuario |  | 5d | 2016-07-01 | 2016-07-11 | 30 | 2016-07-01 | 2016-07-11 | 40h | 2d | 0d |  | AFSSR1 | 40h |
| 39 | 1.18.1.2 | 3.1.2. Casos de uso del módulo de gestión de perfiles |  | 2d | 2016-07-01 | 2016-07-05 | 30 | 2016-07-01 | 2016-07-05 | 32h | 85d | 0d |  | AFSR1; AFSR2 | 32h |
| 40 | 1.18.1.3 | 3.1.3. Casos de uso del módulo de gestión de cursos |  | 2d | 2016-07-05 | 2016-07-07 | 39 | 2016-07-05 | 2016-07-07 | 32h | 85d | 0d |  | AFSR1; AFSR2 | 32h |
| 41 | 1.18.1.4 | 3.1.4. Documentación de Casos de Prueba de Sistemas |  | 3d | 2016-07-11 | 2016-07-14 | 38 | 2016-07-11 | 2016-07-14 | 24h | 2d | 0d |  | AFSSR1 | 24h |
| 42 | 1.18.1.5 | 3.1.5. Documentación de Casos de Prueba Integrales |  | 3d | 2016-07-07 | 2016-07-13 | 40 | 2016-07-07 | 2016-07-13 | 48h | 85d |  |  | AFSR1; AFSR2 | 48h |
| 43 | 1.18.1.6 | 3.1.6. Código fuente de interfaces de usuario |  | 10d | 2016-07-14 | 2016-07-29 | 41 | 2016-07-14 | 2016-07-29 | 240h | 2d | 0d |  | DSR1; DSSR1; DJR1 | 240h |
| 44 | 1.18.1.7 | 3.1.7. Código fuente del módulo de gestión de perfiles |  | 5d | 2016-07-29 | 2016-08-05 | 43 | 2016-07-29 | 2016-08-05 | 80h | 2d | 0d |  | DSR2; DSSR2 | 80h |
| 45 | 1.18.1.8 | 3.1.8. Código fuente del módulo de gestión de cursos |  | 5d | 2016-08-05 | 2016-08-12 | 44 | 2016-08-05 | 2016-08-12 | 120h | 2d | 0d |  | DSR1; DSSR1; DJR1 | 120h |
| 46 | 1.18.1.9 | 3.1.9. Documento de pruebas ejecutadas de Sistemas |  | 5d | 2016-08-12 | 2016-08-23 | 44, 45 | 2016-08-12 | 2016-08-23 | 80h | 2d | 0d |  | AQ2; AQ1 | 80h |
| 47 | 1.18.1.10 | 3.1.10. Documento de pruebas ejecutadas Integrales |  | 5d | 2016-08-23 | 2016-08-30 | 46 | 2016-08-23 | 2016-08-30 | 80h | 2d | 0d |  | AQ1; AQ2 | 80h |
| 48 | 1.18.2 | [1] Código fuente de la aplicación | milestone | 0d | 2016-08-30 | 2016-08-30 | 47 | 2016-08-30 | 2016-08-30 | 0h | 2d | 0d |  |  |  |
| 49 | 1.18.3 | [2] Manual de usuario. | milestone | 0d | 2016-08-30 | 2016-08-30 | 47 | 2016-08-30 | 2016-08-30 | 0h | 54d |  |  |  |  |
| 50 | 1.18.4 | [3] Documento de pruebas ejecutadas de Sistemas e Integrales | milestone | 0d | 2016-08-30 | 2016-08-30 | 47 | 2016-08-30 | 2016-08-30 | 0h | 54d |  |  |  |  |
| 51 | 1.18.5 | [4] Documento de Casos de Uso/Arquitectura Incremento 1 | milestone | 0d | 2016-08-30 | 2016-08-30 | 47 | 2016-08-30 | 2016-08-30 | 0h | 54d |  |  |  |  |
| 52 | 1.18.6 | **Incremento 3.2** |  | 47d | 2016-08-30 | 2016-11-08 |  | 2016-08-30 | 2016-11-08 | 1152h | 2d |  |  |  | 1152h |
| 53 | 1.18.6.1 | 3.2.1. Casos de uso del módulo de autoaprendizaje del sistema |  | 5d | 2016-08-30 | 2016-09-06 | 48 | 2016-08-30 | 2016-09-06 | 40h | 49d |  |  | AFSSR1 | 40h |
| 54 | 1.18.6.2 | 3.2.2. Casos de uso del submódulo inteligente de selección de contenido (CAT) |  | 5d | 2016-08-30 | 2016-09-06 | 48 | 2016-08-30 | 2016-09-06 | 40h | 2d | 0d |  | AFSR1 | 40h |
| 55 | 1.18.6.3 | 3.2.3. Casos de uso del módulo de gestión de contenido |  | 5d | 2016-08-30 | 2016-09-06 | 48 | 2016-08-30 | 2016-09-06 | 40h | 46d | 0d |  | AFSR2 | 40h |
| 56 | 1.18.6.4 | 3.2.4. Documentación de Casos de Prueba de Sistemas |  | 3d | 2016-09-06 | 2016-09-09 | 54 | 2016-09-06 | 2016-09-09 | 24h | 2d | 0d |  | AFSR1 | 24h |
| 57 | 1.18.6.5 | 3.2.5. Documentación de Casos de Prueba Integrales |  | 3d | 2016-09-06 | 2016-09-09 | 55 | 2016-09-06 | 2016-09-09 | 24h | 46d |  |  | AFSR2 | 24h |
| 58 | 1.18.6.6 | 3.2.6. Código fuente del módulo de autoaprendizaje del sistema |  | 15d | 2016-09-09 | 2016-10-03 | 56 | 2016-09-09 | 2016-10-03 | 360h | 2d | 0d |  | DSR1; DSSR1; DJR1 | 360h |
| 59 | 1.18.6.7 | 3.2.7. Código fuente del submódulo inteligente de selección de contenido (CAT) |  | 10d | 2016-09-09 | 2016-09-26 | 56 | 2016-09-09 | 2016-09-26 | 160h | 36d |  |  | DSR2; DSSR2 | 160h |
| 60 | 1.18.6.8 | 3.2.8. Código fuente del módulo de gestión de contenido |  | 10d | 2016-10-03 | 2016-10-19 | 58 | 2016-10-03 | 2016-10-19 | 160h | 2d | 0d |  | DSR2; DSSR2 | 160h |
| 61 | 1.18.6.9 | 3.2.9. Documento de pruebas ejecutadas de Sistemas |  | 7d | 2016-10-19 | 2016-10-28 | 60 | 2016-10-19 | 2016-10-28 | 112h | 2d | 0d |  | AQ1; AQ2 | 112h |
| 62 | 1.18.6.10 | 3.2.10. Documento de pruebas ejecutadas Integrales |  | 7d | 2016-10-28 | 2016-11-08 | 61 | 2016-10-28 | 2016-11-08 | 112h | 2d | 0d |  | AQ1; AQ2 | 112h |
| 63 | 1.18.6.11 | [*] Elaborar Tablero de Control Segunda Presentación |  | 10d | 2016-09-02 | 2016-09-16 |  | 2016-09-02 | 2016-09-16 | 80h | 41.62d |  | start no earlier than 2016-09-02 | PM | 80h |
| 64 | 1.18.7 | [1] Código fuente de la aplicación | milestone | 0d | 2016-11-08 | 2016-11-08 | 62 | 2016-11-08 | 2016-11-08 | 0h | 2d | 0d |  |  |  |
| 65 | 1.18.8 | [2] Manual de usuario | milestone | 0d | 2016-11-08 | 2016-11-08 | 62 | 2016-11-08 | 2016-11-08 | 0h | 7d |  |  |  |  |
| 66 | 1.18.9 | [3] Documento de pruebas ejecutadas (Fin del desarollo 21/10) | milestone | 0d | 2016-11-08 | 2016-11-08 | 62 | 2016-11-08 | 2016-11-08 | 0h | 7d |  |  |  |  |
| 67 | 1.18.10 | [4] Documento Tablero de Control Segunda Presentación | milestone | 0d | 2016-11-08 | 2016-11-08 | 62 | 2016-11-08 | 2016-11-08 | 0h | 7d |  |  |  |  |
| 68 | 1.18.11 | [5] Documento de Casos de Uso/Arquitectura Incremento 2 | milestone | 0d | 2016-11-08 | 2016-11-08 | 62 | 2016-11-08 | 2016-11-08 | 0h | 7d |  |  |  |  |

| ID | WBS | Task | Type | Duration | Start | Finish | Predecessors | Baseline start | Baseline finish | Baseline duration | Total slack | Free slack | Constraint | Resources | Work |
| --- | --- | --- | --- | --- | --- | --- | --- | --- | --- | --- | --- | --- | --- | --- | --- |
| 69 | 1.19 | **Etapa 4: Implementación** |  | 2d | 2016-11-08 | 2016-11-11 |  | 2016-11-08 | 2016-11-11 | 48h | 2d |  |  |  | 48h |
| 70 | 1.19.1 | 4.1.Manuales de usuario |  | 2d | 2016-11-08 | 2016-11-11 | 64 | 2016-11-08 | 2016-11-11 | 16h | 2d | 0d |  | AFSR1 | 16h |
| 71 | 1.19.2 | 4.2 Solución integral en entornos Productivos |  | 2d | 2016-11-08 | 2016-11-11 | 64 | 2016-11-08 | 2016-11-11 | 32h | 5d | 0d |  | ARQ; LD | 32h |
| 72 | 1.20 | [*] Elaborar Tablero de Control Tercera Presentación |  | 4h | 2016-11-04 | 2016-11-04 |  | 2016-11-04 | 2016-11-04 | 4h | 0d |  | finish no earlier than 2016-11-04 | PM | 4h |
| 73 | 1.21 | [1] Documentación Manual de Usuario | milestone | 0d | 2016-11-11 | 2016-11-11 | 70 | 2016-11-11 | 2016-11-11 | 0h | 5d |  |  |  |  |
| 74 | 1.22 | [2] Documentación Solución integral en entornos Productivos | milestone | 0d | 2016-11-11 | 2016-11-11 | 71 | 2016-11-11 | 2016-11-11 | 0h | 5d |  |  |  |  |
| 75 | 1.23 | [3] Documentación Tablero de Control Tercera Presentación | milestone | 0d | 2016-11-04 | 2016-11-04 |  | 2016-11-04 | 2016-11-04 | 0h | 9d |  | finish no earlier than 2016-11-04 |  |  |
| 76 | 1.24 | **Etapa 5: Cierre** |  | 9d | 2016-11-04 | 2016-11-18 |  | 2016-11-04 | 2016-11-18 | 120h | 0d |  |  |  | 120h |
| 77 | 1.24.1 | 5.1 Documento Lecciones Aprendidas |  | 3d | 2016-11-11 | 2016-11-16 | 70 | 2016-11-11 | 2016-11-16 | 24h | 2d | 0d |  | LD | 24h |
| 78 | 1.24.2 | 5.2 Documento Cierre del Proyecto |  | 3d | 2016-11-11 | 2016-11-16 | 70 | 2016-11-11 | 2016-11-16 | 24h | 2d |  |  | PM | 24h |
| 79 | 1.24.3 | 5.3 Presentación Final (18/11) |  | 9d | 2016-11-04 | 2016-11-18 | 72 | 2016-11-04 | 2016-11-18 | 72h | 0d |  |  | PM | 72h |
| 80 | 1.25 | [1] Documento Lecciones Aprendidas | milestone | 0d | 2016-11-16 | 2016-11-16 | 77 | 2016-11-16 | 2016-11-16 | 0h | 2d | 0d |  |  |  |
| 81 | 1.26 | [2] Documento Cierre del Proyecto | milestone | 0d | 2016-11-16 | 2016-11-16 | 80 | 2016-11-16 | 2016-11-16 | 0h | 2d | 0d |  |  |  |
| 82 | 1.27 | [3] Presentación Final | milestone | 0d | 2016-11-16 | 2016-11-16 | 81 | 2016-11-16 | 2016-11-16 | 0h | 2d |  |  |  |  |
